# fspm_0570

Schedule from MS Project, 2025-12-01 to 2026-05-06.

## Calendars

- Standard: Mon-Fri 08:00-12:00, 13:00-17:00; Sat-Sun off. Exceptions (off unless hours are given): 2025-12-25 (Quaid-e-Azam Day), 2025-12-26 (Day after Christmas), 2026-01-01 (New Year), 2026-02-05 (Kashmir Day), 2026-03-21 to 2026-03-22 (Eid ul-Fitr), 2026-03-23 (Pakistan Day), 2026-05-01 (Labour Day).

## Resources

| Resource |
| --- |
| Project Manager;Stakeholders |
| Project Manager;Senior Management |
| Project Manager |
| Project Manager;Business Analyst |
| DevOps Engineer;Project Manager |
| Business Analyst;UX Researcher |
| Business Analyst |
| Business Analyst;Technical Lead |
| Business Analyst;System Architect |
| Business Analyst;Project Manager |
| Business Analyst;Expert Consultant |
| Technical Lead;System Architect |
| System Architect;Technical Lead |
| DevOps Engineer;Technical Lead |
| Backend Developer;Technical Lead |
| DevOps Engineer |
| Project Manager;Technical Lead |
| UX Researcher;UI Designer |
| UX Designer |
| UI Designer |
| UI Designer;UX Designer |
| UX Researcher;UX Designer |
| UX Researcher |
| UI Designer;Frontend Lead |
| Database Architect;System Architect |
| Database Architect |
| Database Architect;Technical Lead |
| Backend Lead;Senior Backend Developer |
| Database Developer;Backend Lead |
| Backend Developer |
| Senior Backend Developer |
| DevOps Engineer;Backend Developer |
| QA Engineer;Backend Developer |
| Mobile Lead;Senior Mobile Developer |
| Mobile Developer |
| Senior Mobile Developer |
| Mobile Lead;QA Engineer |
| Android Developer |
| Senior Android Developer |
| Frontend Lead;Senior Frontend Developer |
| Frontend Developer |
| Senior Frontend Developer |
| Frontend Lead |
| QA Lead;Test Manager |
| QA Engineer;Test Analyst |
| QA Engineer;DevOps Engineer |
| QA Engineer |
| Senior QA Engineer |
| QA Lead;Test Analyst |
| QA Team |
| Performance Test Engineer |
| Backend Lead;Database Architect |
| Security Engineer |
| Security Engineer;Ethical Hacker |
| Backend Lead;DevOps Engineer |
| QA Engineer;Mobile QA |
| Project Manager;QA Lead;Stakeholders |
| DevOps Engineer;Cloud Architect |
| Database Administrator;DevOps Engineer |
| DevOps Engineer;SRE |
| DevOps Engineer;Database Administrator |
| DevOps Engineer;Backend Lead |
| DevOps Engineer;Frontend Lead |
| Mobile Lead;iOS Developer |
| Mobile Lead;Android Developer |
| QA Lead;DevOps Engineer |
| Operations Manager;Business Analyst |
| Operations Manager;Procurement |
| HR Manager;Operations Manager |
| HR Manager |
| Operations Manager |
| Training Specialist;Technical Writer |
| Training Specialist;Video Producer |
| Training Specialist;Operations Manager |
| Training Specialist;Technical Lead |
| Training Specialist |
| Marketing Manager;Brand Designer |
| Marketing Team;Content Creator |
| Graphic Designer |
| Marketing Manager |
| Backend Developer;Marketing Manager |
| Operations Team;Technical Team |
| DevOps Engineer;SRE;Operations Manager |
| Customer Support;Product Manager |
| Operations Manager;Technical Lead |
| Marketing Team |
| Product Manager;Marketing Manager |
| Project Manager;Team Leads |
| Project Manager;Operations Team |

## Schedule

| ID | WBS | Task | Duration | Start | Finish | Predecessors | Total slack | Free slack | Resources | Work | wbss |
| --- | --- | --- | --- | --- | --- | --- | --- | --- | --- | --- | --- |
| 1 | 1 | **FoodHub Project** | 107d | 2025-12-01 | 2026-05-06 |  | 0d |  |  | 3408h |  |
| 2 | 1.1 | **1.0 PROJECT INITIATION & PLANNING (Weeks 1-2)** | 15d | 2025-12-01 | 2025-12-19 |  | 2d |  |  | 264h |  |
| 3 | 1.1.1 | **Project Initiation (Activities 1-6)** | 6d | 2025-12-01 | 2025-12-08 |  | 101d |  |  | 64h | 1.1 |
| 4 | 1.1.1.1 | Conduct project kickoff meeting with stakeholders | 1d | 2025-12-01 | 2025-12-01 |  | 101d | 0d | Project Manager;Stakeholders | 8h | 1.1.1 |
| 5 | 1.1.1.2 | Define and approve project charter | 2d | 2025-12-02 | 2025-12-03 | 4 | 101d | 0d | Project Manager;Senior Management | 16h | 1.1.2 |
| 6 | 1.1.1.3 | Establish project governance and communication structure | 1d | 2025-12-04 | 2025-12-04 | 5 | 101d | 0d | Project Manager | 8h | 1.1.3 |
| 7 | 1.1.1.4 | Conduct stakeholder identification and create register | 1d | 2025-12-02 | 2025-12-02 | 4 | 103d | 0d | Project Manager;Business Analyst | 8h | 1.1.4 |
| 8 | 1.1.1.5 | Schedule expert consultant sessions | 1d | 2025-12-04 | 2025-12-04 | 5 | 103d |  | Project Manager | 8h | 1.1.5 |
| 9 | 1.1.1.6 | Set up project repository and documentation tools | 2d | 2025-12-05 | 2025-12-08 | 6 | 101d |  | DevOps Engineer;Project Manager | 16h | 1.1.6 |
| 10 | 1.1.2 | **Requirements Gathering (Activities 7-13)** | 7d | 2025-12-03 | 2025-12-11 |  |  |  |  | 96h | 1.2 |
| 11 | 1.1.2.1 | Conduct customer needs analysis workshop | 2d | 2025-12-03 | 2025-12-04 | 7 | 103d |  | Business Analyst;UX Researcher | 16h | 1.2.1 |
| 12 | 1.1.2.2 | Interview restaurant staff for operational requirements | 2d | 2025-12-03 | 2025-12-04 | 7 | 103d |  | Business Analyst | 16h | 1.2.2 |
| 13 | 1.1.2.3 | Gather delivery rider requirements | 1d | 2025-12-03 | 2025-12-03 | 7 | 104d |  | Business Analyst | 8h | 1.2.3 |
| 14 | 1.1.2.4 | Document functional requirements for all systems | 3d | 2025-12-03 | 2025-12-05 |  | 31d | 0d | Business Analyst;Technical Lead | 24h | 1.2.4 |
| 15 | 1.1.2.5 | Create use case diagrams for all user types | 2d | 2025-12-08 | 2025-12-09 | 14 | 98d | 0d | Business Analyst;System Architect | 16h | 1.2.5 |
| 16 | 1.1.2.6 | Validate requirements with stakeholders | 1d | 2025-12-10 | 2025-12-10 | 15 | 98d | 0d | Business Analyst;Project Manager | 8h | 1.2.6 |
| 17 | 1.1.2.7 | Finalize requirements document with expert approval | 1d | 2025-12-11 | 2025-12-11 | 16 | 98d |  | Business Analyst;Expert Consultant | 8h | 1.2.7 |
| 18 | 1.1.3 | **Technical Planning (Activities 14-20)** | 10d | 2025-12-08 | 2025-12-19 |  |  |  |  | 104h | 1.3 |
| 19 | 1.1.3.1 | Evaluate and select technology stack | 2d | 2025-12-08 | 2025-12-09 | 14 | 31d | 0d | Technical Lead;System Architect | 16h | 1.3.1 |
| 20 | 1.1.3.2 | Design high-level system architecture | 3d | 2025-12-10 | 2025-12-12 | 19 | 97d |  | System Architect;Technical Lead | 24h | 1.3.2 |
| 21 | 1.1.3.3 | Select cloud hosting provider and services | 2d | 2025-12-10 | 2025-12-11 | 19 | 31d | 0d | DevOps Engineer;Technical Lead | 16h | 1.3.3 |
| 22 | 1.1.3.4 | Select payment and SMS gateway providers | 2d | 2025-12-10 | 2025-12-11 | 19 | 98d |  | Backend Developer;Technical Lead | 16h | 1.3.4 |
| 23 | 1.1.3.5 | Set up development environments | 1d | 2025-12-12 | 2025-12-12 | 21 | 31d | 0d | DevOps Engineer | 8h | 1.3.5 |
| 24 | 1.1.3.6 | Establish version control and CI/CD pipeline | 1d | 2025-12-15 | 2025-12-15 | 23 | 31d | 0d | DevOps Engineer | 8h | 1.3.6 |
| 25 | 1.1.3.7 | Finalize project plan with WBS and timeline | 2d | 2025-12-16 | 2025-12-17 | 24 | 31d | 0d | Project Manager;Technical Lead | 16h | 1.3.7 |

| ID | WBS | Task | Type | Duration | Start | Finish | Predecessors | Total slack | Free slack | Constraint | Resources | Work | wbss |
| --- | --- | --- | --- | --- | --- | --- | --- | --- | --- | --- | --- | --- | --- |
| 26 | 1.2 | **2.0 DESIGN PHASE (Weeks 3-6)** |  | 17d | 2025-12-18 | 2026-01-14 |  |  |  |  |  | 528h |  |
| 27 | 1.2.1 | **UI/UX Design - Customer App (Activities 21-28)** |  | 13d | 2025-12-18 | 2026-01-08 |  | 81d |  |  |  | 152h | 2.1 |
| 28 | 1.2.1.1 | Conduct user research and create personas |  | 3d | 2025-12-18 | 2025-12-22 | 25 | 83d | 0d |  | UX Researcher;UI Designer | 24h | 2.1.1 |
| 29 | 1.2.1.2 | Create user journey maps and information architecture |  | 2d | 2025-12-23 | 2025-12-24 | 28 | 83d | 0d |  | UX Designer | 16h | 2.1.2 |
| 30 | 1.2.1.3 | Design wireframes for all customer app screens |  | 3d | 2025-12-29 | 2025-12-31 | 29 | 83d | 0d |  | UX Designer | 24h | 2.1.3 |
| 31 | 1.2.1.4 | Design high-fidelity mockups for home and menu screens |  | 3d | 2026-01-02 | 2026-01-06 | 30 | 83d |  |  | UI Designer | 24h | 2.1.4 |
| 32 | 1.2.1.5 | Design shopping cart and checkout flow |  | 2d | 2026-01-02 | 2026-01-05 | 30 | 84d |  |  | UI Designer;UX Designer | 16h | 2.1.5 |
| 33 | 1.2.1.6 | Design order tracking interface with map |  | 2d | 2026-01-02 | 2026-01-05 | 30 | 84d |  |  | UI Designer | 16h | 2.1.6 |
| 34 | 1.2.1.7 | Design profile and order history screens |  | 2d | 2026-01-02 | 2026-01-05 | 30 | 84d |  |  | UI Designer | 16h | 2.1.7 |
| 35 | 1.2.1.8 | Conduct usability testing with target users |  | 2d | 2026-01-07 | 2026-01-08 |  | 81d |  | start no earlier than 2026-01-07 | UX Researcher;UI Designer | 16h | 2.1.8 |
| 36 | 1.2.2 | **UI/UX Design - Rider App (Activities 29-34)** |  | 9d | 2025-12-18 | 2026-01-02 |  | 85d |  |  |  | 88h | 2.2 |
| 37 | 1.2.2.1 | Create rider personas and journey maps |  | 2d | 2025-12-23 | 2025-12-24 | 28 | 85d | 0d |  | UX Researcher;UX Designer | 16h | 2.2.1 |
| 38 | 1.2.2.2 | Design rider dashboard and order assignment interface |  | 2d | 2025-12-29 | 2025-12-30 | 37 | 85d | 0d |  | UI Designer | 16h | 2.2.2 |
| 39 | 1.2.2.3 | Design navigation and routing screens |  | 2d | 2025-12-29 | 2025-12-30 | 37 | 87d |  |  | UI Designer | 16h | 2.2.3 |
| 40 | 1.2.2.4 | Design delivery confirmation flow |  | 2d | 2025-12-31 | 2026-01-02 | 38 | 85d |  |  | UI Designer | 16h | 2.2.4 |
| 41 | 1.2.2.5 | Design earnings and performance dashboard |  | 2d | 2025-12-31 | 2026-01-02 | 38 | 85d |  |  | UI Designer | 16h | 2.2.5 |
| 42 | 1.2.2.6 | Validate designs with delivery riders |  | 1d | 2025-12-18 | 2025-12-18 |  | 93d |  |  | UX Researcher;UI Designer | 8h | 2.2.6 |
| 43 | 1.2.3 | **UI/UX Design - Restaurant Portal (Activities 35-40)** |  | 8d | 2025-12-23 | 2026-01-06 |  | 68d |  |  |  | 88h | 2.3 |
| 44 | 1.2.3.1 | Design restaurant dashboard and order queue |  | 2d | 2025-12-23 | 2025-12-24 | 28 | 87d | 0d |  | UI Designer | 16h | 2.3.1 |
| 45 | 1.2.3.2 | Design kitchen display system (KDS) interface |  | 2d | 2025-12-29 | 2025-12-30 | 44 | 87d |  |  | UI Designer;UX Designer | 16h | 2.3.2 |
| 46 | 1.2.3.3 | Design menu and inventory management screens |  | 2d | 2025-12-29 | 2025-12-30 | 44 | 87d |  |  | UI Designer | 16h | 2.3.3 |
| 47 | 1.2.3.4 | Design sales reporting interface |  | 1d | 2025-12-29 | 2025-12-29 | 44 | 88d |  |  | UI Designer | 8h | 2.3.4 |
| 48 | 1.2.3.5 | Validate designs with restaurant staff |  | 1d | 2025-12-31 | 2025-12-31 |  | 64d | 0d | start no earlier than 2025-12-31 | UX Researcher | 8h | 2.3.5 |
| 49 | 1.2.3.6 | Design Complete | milestone | 0d | 2025-12-31 | 2025-12-31 | 48 | 86d |  |  |  |  |  |
| 50 | 1.2.3.7 | Create design system and component library |  | 3d | 2026-01-02 | 2026-01-06 | 48 | 64d | 0d |  | UI Designer;Frontend Lead | 24h | 2.3.6 |

| ID | WBS | Task | Duration | Start | Finish | Predecessors | Total slack | Free slack | Resources | Work | wbss |
| --- | --- | --- | --- | --- | --- | --- | --- | --- | --- | --- | --- |
| 51 | 1.2.4 | **UI/UX Design - Admin Dashboard (Activities 41-44)** | 4d | 2025-12-23 | 2025-12-30 |  | 87d |  |  | 64h | 2.4 |
| 52 | 1.2.4.1 | Design admin dashboard with key metrics | 2d | 2025-12-23 | 2025-12-24 | 28 | 87d | 0d | UI Designer | 16h | 2.4.1 |
| 53 | 1.2.4.2 | Design analytics and reporting interfaces | 2d | 2025-12-29 | 2025-12-30 | 52 | 87d |  | UI Designer | 16h | 2.4.2 |
| 54 | 1.2.4.3 | Design user and system management screens | 2d | 2025-12-29 | 2025-12-30 | 52 | 87d |  | UI Designer | 16h | 2.4.3 |
| 55 | 1.2.4.4 | Design promotional campaign management interface | 2d | 2025-12-29 | 2025-12-30 | 52 | 87d |  | UI Designer | 16h | 2.4.4 |
| 56 | 1.2.5 | **Database Design (Activities 45-52)** | 17d | 2025-12-18 | 2026-01-14 |  | 31d |  |  | 136h | 2.5 |
| 57 | 1.2.5.1 | Create entity-relationship diagram (ERD) | 3d | 2025-12-18 | 2025-12-22 | 25 | 31d | 0d | Database Architect;System Architect | 24h | 2.5.1 |
| 58 | 1.2.5.2 | Design user authentication and profile tables | 2d | 2025-12-23 | 2025-12-24 | 57 | 31d | 0d | Database Architect | 16h | 2.5.2 |
| 59 | 1.2.5.3 | Design menu category and item tables | 2d | 2025-12-29 | 2025-12-30 | 58 | 31d | 0d | Database Architect | 16h | 2.5.3 |
| 60 | 1.2.5.4 | Design order and order items tables | 2d | 2025-12-31 | 2026-01-02 | 59 | 31d | 0d | Database Architect | 16h | 2.5.4 |
| 61 | 1.2.5.5 | Design payment and transaction tables | 2d | 2026-01-05 | 2026-01-06 | 60 | 31d | 0d | Database Architect | 16h | 2.5.5 |
| 62 | 1.2.5.6 | Design delivery rider and tracking tables | 2d | 2026-01-07 | 2026-01-08 | 61 | 31d | 0d | Database Architect | 16h | 2.5.6 |
| 63 | 1.2.5.7 | Design loyalty program and promotional tables | 2d | 2026-01-09 | 2026-01-12 | 62 | 31d | 0d | Database Architect | 16h | 2.5.7 |
| 64 | 1.2.5.8 | Normalize schema and create indexing strategy | 2d | 2026-01-13 | 2026-01-14 | 63 | 31d | 0d | Database Architect;Technical Lead | 16h | 2.5.8 |
| 65 | 1.3 | **3.0 DEVELOPMENT PHASE (Weeks 7-16)** | 62d | 2025-12-22 | 2026-03-23 |  |  |  |  | 1336h |  |
| 66 | 1.3.1 | **Backend Development - Foundation (Activities 53-65)** | 7d | 2026-01-15 | 2026-01-23 |  | 31d |  |  | 208h | 3.1 |
| 67 | 1.3.1.1 | Set up Node.js backend framework and structure | 2d | 2026-01-15 | 2026-01-16 | 64, 50 | 73d | 0d | Backend Lead;Senior Backend Developer | 16h | 3.1.1 |
| 68 | 1.3.1.2 | Configure PostgreSQL database with migrations | 2d | 2026-01-15 | 2026-01-16 | 64 | 31d | 0d | Database Developer;Backend Lead | 16h | 3.1.2 |
| 69 | 1.3.1.3 | Set up Redis caching layer | 1d | 2026-01-19 | 2026-01-19 | 67 | 74d |  | Backend Developer | 8h | 3.1.3 |
| 70 | 1.3.1.4 | Implement JWT authentication and authorization | 3d | 2026-01-19 | 2026-01-21 | 68 | 31d | 0d | Senior Backend Developer | 24h | 3.1.4 |
| 71 | 1.3.1.5 | Implement user registration and OTP verification | 2d | 2026-01-22 | 2026-01-23 | 70 | 70d |  | Backend Developer | 16h | 3.1.5 |
| 72 | 1.3.1.6 | Implement password reset functionality | 2d | 2026-01-22 | 2026-01-23 | 70 | 70d |  | Backend Developer | 16h | 3.1.6 |
| 73 | 1.3.1.7 | Implement role-based access control (RBAC) | 2d | 2026-01-22 | 2026-01-23 | 70 | 70d |  | Senior Backend Developer | 16h | 3.1.7 |
| 74 | 1.3.1.8 | Set up API rate limiting and error handling | 2d | 2026-01-19 | 2026-01-20 | 67 | 73d |  | Backend Developer | 16h | 3.1.8 |
| 75 | 1.3.1.9 | Implement logging and monitoring services | 2d | 2026-01-19 | 2026-01-20 | 67 | 73d |  | DevOps Engineer;Backend Developer | 16h | 3.1.9 |
| 76 | 1.3.1.10 | Set up API documentation (Swagger/OpenAPI) | 2d | 2026-01-19 | 2026-01-20 | 67 | 73d |  | Backend Developer | 16h | 3.1.10 |
| 77 | 1.3.1.11 | Create automated database backup system | 2d | 2026-01-19 | 2026-01-20 | 68 | 73d |  | DevOps Engineer | 16h | 3.1.11 |
| 78 | 1.3.1.12 | Implement security middleware and validation | 2d | 2026-01-22 | 2026-01-23 | 70 | 70d |  | Senior Backend Developer | 16h | 3.1.12 |
| 79 | 1.3.1.13 | Set up testing framework and initial tests | 2d | 2026-01-19 | 2026-01-20 | 67 | 73d |  | QA Engineer;Backend Developer | 16h | 3.1.13 |

| ID | WBS | Task | Duration | Start | Finish | Predecessors | Total slack | Free slack | Constraint | Resources | Work | wbss |
| --- | --- | --- | --- | --- | --- | --- | --- | --- | --- | --- | --- | --- |
| 80 | 1.3.2 | **Backend Development - Core Features (Activities 66-82)** | 26d | 2026-01-05 | 2026-02-10 |  |  |  |  |  | 328h | 3.2 |
| 81 | 1.3.2.1 | Implement menu management APIs (CRUD) | 3d | 2026-01-22 | 2026-01-26 | 70 | 31d | 0d |  | Backend Developer | 24h | 3.2.1 |
| 82 | 1.3.2.2 | Implement shopping cart APIs | 2d | 2026-01-27 | 2026-01-28 | 81 | 67d |  |  | Backend Developer | 16h | 3.2.2 |
| 83 | 1.3.2.3 | Implement order placement and management APIs | 4d | 2026-01-27 | 2026-01-30 | 81 | 35d | 0d |  | Senior Backend Developer | 32h | 3.2.3 |
| 84 | 1.3.2.4 | Implement order status update workflow | 2d | 2026-02-02 | 2026-02-03 | 83 | 63d |  |  | Backend Developer | 16h | 3.2.4 |
| 85 | 1.3.2.5 | Implement real-time tracking with WebSocket | 3d | 2026-02-02 | 2026-02-04 | 83 | 35d | 0d |  | Senior Backend Developer | 24h | 3.2.5 |
| 86 | 1.3.2.6 | Integrate Stripe payment gateway | 3d | 2026-02-02 | 2026-02-04 | 83 | 60d | 0d |  | Senior Backend Developer | 24h | 3.2.6 |
| 87 | 1.3.2.7 | Integrate JazzCash payment API | 2d | 2026-02-06 | 2026-02-09 | 86 | 60d |  |  | Backend Developer | 16h | 3.2.7 |
| 88 | 1.3.2.8 | Integrate EasyPaisa payment API | 2d | 2026-02-06 | 2026-02-09 | 86 | 60d |  |  | Backend Developer | 16h | 3.2.8 |
| 89 | 1.3.2.9 | Implement payment webhook handlers | 2d | 2026-02-06 | 2026-02-09 | 86 | 60d |  |  | Backend Developer | 16h | 3.2.9 |
| 90 | 1.3.2.10 | Integrate Google Maps API (geocoding routing) | 3d | 2026-02-02 | 2026-02-04 | 83 | 59d | 0d |  | Senior Backend Developer | 24h | 3.2.10 |
| 91 | 1.3.2.11 | Implement rider assignment algorithm | 3d | 2026-02-06 | 2026-02-10 | 90 | 59d |  |  | Senior Backend Developer | 24h | 3.2.11 |
| 92 | 1.3.2.12 | Implement rider location tracking API | 2d | 2026-02-06 | 2026-02-09 | 85 | 60d |  |  | Backend Developer | 16h | 3.2.12 |
| 93 | 1.3.2.13 | Integrate Firebase Cloud Messaging (FCM) | 2d | 2026-02-02 | 2026-02-03 | 83 | 61d | 0d |  | Backend Developer | 16h | 3.2.13 |
| 94 | 1.3.2.14 | Integrate Twilio SMS service | 2d | 2026-02-02 | 2026-02-03 | 83 | 61d | 0d |  | Backend Developer | 16h | 3.2.14 |
| 95 | 1.3.2.15 | Implement notification scheduling service | 2d | 2026-02-04 | 2026-02-06 | 93, 94 | 61d |  |  | Backend Developer | 16h | 3.2.15 |
| 96 | 1.3.2.16 | Implement loyalty points calculation engine | 2d | 2026-02-02 | 2026-02-03 | 83 | 63d |  |  | Backend Developer | 16h | 3.2.16 |
| 97 | 1.3.2.17 | Implement promotional code validation API | 2d | 2026-02-02 | 2026-02-03 | 83 | 63d |  |  | Backend Developer | 16h | 3.2.17 |
| 98 | 1.3.3 | **Frontend Development - Customer Mobile App (Activities 83-97)** | 29d | 2026-01-13 | 2026-02-23 |  |  |  |  |  | 304h | 3.3 |
| 99 | 1.3.3.1 | Set up React Native project structure | 2d | 2026-01-27 | 2026-01-28 | 81 | 31d | 0d |  | Mobile Lead;Senior Mobile Developer | 16h | 3.3.1 |
| 100 | 1.3.3.2 | Implement splash screen and onboarding | 2d | 2026-01-29 | 2026-01-30 | 99 | 62d | 0d |  | Mobile Developer | 16h | 3.3.2 |
| 101 | 1.3.3.3 | Implement user registration and login flow | 3d | 2026-02-12 | 2026-02-16 | 107 | 51d | 0d |  | Mobile Developer | 24h | 3.3.3 |
| 102 | 1.3.3.4 | Implement home screen with promotions | 3d | 2026-02-02 | 2026-02-04 | 100 | 62d |  |  | Mobile Developer | 24h | 3.3.4 |
| 103 | 1.3.3.5 | Implement menu browsing with categories | 3d | 2026-01-29 | 2026-02-02 | 99, 81 | 62d | 0d |  | Mobile Developer | 24h | 3.3.5 |
| 104 | 1.3.3.6 | Implement search and filtering functionality | 2d | 2026-02-03 | 2026-02-04 | 103 | 62d |  | start no earlier than 2026-01-19 | Mobile Developer | 16h | 3.3.6 |
| 105 | 1.3.3.7 | Implement product detail and customization | 3d | 2026-01-29 | 2026-02-02 | 99, 81 | 31d | 0d | start no earlier than 2026-01-19 | Mobile Developer | 24h | 3.3.7 |
| 106 | 1.3.3.8 | Implement shopping cart management | 3d | 2026-02-03 | 2026-02-06 | 105 | 31d | 0d |  | Senior Mobile Developer | 24h | 3.3.8 |
| 107 | 1.3.3.9 | Implement checkout and payment integration | 3d | 2026-02-09 | 2026-02-11 | 106 | 31d | 0d |  | Senior Mobile Developer | 24h | 3.3.9 |
| 108 | 1.3.3.10 | Implement order tracking with live map | 3d | 2026-02-12 | 2026-02-16 | 85, 107 | 31d | 0d | start no earlier than 2026-02-02 | Senior Mobile Developer | 24h | 3.3.10 |
| 109 | 1.3.3.11 | Implement push notification handling | 2d | 2026-02-17 | 2026-02-18 | 108 | 31d | 0d |  | Mobile Developer | 16h | 3.3.11 |
| 110 | 1.3.3.12 | Implement order history and reordering | 2d | 2026-02-19 | 2026-02-20 | 111 | 51d |  |  | Mobile Developer | 16h | 3.3.12 |
| 111 | 1.3.3.13 | Implement user profile management | 2d | 2026-02-17 | 2026-02-18 | 101 | 51d | 0d |  | Mobile Developer | 16h | 3.3.13 |
| 112 | 1.3.3.14 | Implement ratings and review system | 2d | 2026-02-09 | 2026-02-10 | 99 | 59d |  | start no earlier than 2026-02-09 | Mobile Developer | 16h | 3.3.14 |
| 113 | 1.3.3.15 | Optimize performance and test on devices | 3d | 2026-02-19 | 2026-02-23 | 109 | 31d | 0d |  | Mobile Lead;QA Engineer | 24h | 3.3.15 |

| ID | WBS | Task | Type | Duration | Start | Finish | Predecessors | Total slack | Free slack | Constraint | Resources | Work | wbss |
| --- | --- | --- | --- | --- | --- | --- | --- | --- | --- | --- | --- | --- | --- |
| 114 | 1.3.4 | **Frontend Development - Rider Mobile App (Activities 98-107)** |  | 9d | 2026-01-07 | 2026-01-19 |  | 74d |  |  |  | 200h | 3.4 |
| 115 | 1.3.4.1 | Set up Android project for rider app |  | 2d | 2026-01-07 | 2026-01-08 | 50 | 74d | 0d | start no earlier than 2025-12-22 | Android Developer | 16h | 3.4.1 |
| 116 | 1.3.4.2 | Implement rider authentication and profile |  | 3d | 2026-01-09 | 2026-01-13 | 115 | 78d |  |  | Android Developer | 24h | 3.4.2 |
| 117 | 1.3.4.3 | Implement order list and assignment screen |  | 3d | 2026-01-09 | 2026-01-13 | 115 | 74d | 0d |  | Android Developer | 24h | 3.4.3 |
| 118 | 1.3.4.4 | Implement order acceptance/rejection flow |  | 2d | 2026-01-14 | 2026-01-15 | 117 | 74d | 0d |  | Android Developer | 16h | 3.4.4 |
| 119 | 1.3.4.5 | Implement Google Maps navigation integration |  | 3d | 2026-01-09 | 2026-01-13 | 115 | 75d | 0d |  | Senior Android Developer | 24h | 3.4.5 |
| 120 | 1.3.4.6 | Implement background GPS tracking service |  | 3d | 2026-01-14 | 2026-01-16 | 119 | 75d |  |  | Senior Android Developer | 24h | 3.4.6 |
| 121 | 1.3.4.7 | Implement customer communication (call/message) |  | 2d | 2026-01-14 | 2026-01-15 | 117 | 76d |  |  | Android Developer | 16h | 3.4.7 |
| 122 | 1.3.4.8 | Implement delivery confirmation with PIN |  | 2d | 2026-01-16 | 2026-01-19 | 118 | 74d |  |  | Android Developer | 16h | 3.4.8 |
| 123 | 1.3.4.9 | Implement earnings and performance dashboard |  | 3d | 2026-01-14 | 2026-01-16 | 117 | 75d |  |  | Android Developer | 24h | 3.4.9 |
| 124 | 1.3.4.10 | Implement availability toggle and optimize battery |  | 2d | 2026-01-09 | 2026-01-12 | 115 | 77d | 43d |  | Senior Android Developer | 16h | 3.4.10 |
| 125 | 1.3.5 | **Frontend Development - Restaurant Portal (Activities 108-114)** |  | 8d | 2026-01-07 | 2026-01-16 |  | 74d |  |  |  | 160h | 3.5 |
| 126 | 1.3.5.1 | Set up React.js project for restaurant portal |  | 2d | 2026-01-07 | 2026-01-08 | 50 | 74d | 0d | start no earlier than 2025-12-22 | Frontend Lead;Senior Frontend Developer | 16h | 3.5.1 |
| 127 | 1.3.5.2 | Implement staff authentication system |  | 2d | 2026-01-09 | 2026-01-12 | 126 | 74d | 0d |  | Frontend Developer | 16h | 3.5.2 |
| 128 | 1.3.5.3 | Implement real-time order queue with alerts |  | 4d | 2026-01-09 | 2026-01-14 | 126 | 77d |  |  | Senior Frontend Developer | 32h | 3.5.3 |
| 129 | 1.3.5.4 | Implement order details and status updates |  | 3d | 2026-01-09 | 2026-01-13 | 126 | 78d |  |  | Frontend Developer | 24h | 3.5.4 |
| 130 | 1.3.5.5 | Implement menu management interface |  | 3d | 2026-01-09 | 2026-01-13 | 126 | 75d | 0d |  | Frontend Developer | 24h | 3.5.5 |
| 131 | 1.3.5.6 | Implement inventory management |  | 3d | 2026-01-14 | 2026-01-16 | 130 | 75d |  |  | Frontend Developer | 24h | 3.5.6 |
| 132 | 1.3.5.7 | Implement sales reports and analytics |  | 3d | 2026-01-13 | 2026-01-15 | 127 | 74d | 40d |  | Senior Frontend Developer | 24h | 3.5.7 |
| 133 | 1.3.6 | **Frontend Development - Admin Dashboard (Activities 115-120)** |  | 23d | 2026-02-16 | 2026-03-18 |  |  |  |  |  | 136h | 3.6 |
| 134 | 1.3.6.1 | Set up admin dashboard project structure |  | 2d | 2026-02-24 | 2026-02-25 | 113, 50 | 31d | 0d |  | Frontend Lead | 16h | 3.6.1 |
| 135 | 1.3.6.2 | Implement admin authentication and authorization |  | 2d | 2026-02-26 | 2026-02-27 | 134 | 31d | 0d |  | Senior Frontend Developer | 16h | 3.6.2 |
| 136 | 1.3.6.3 | Implement operational dashboard with real-time metrics |  | 4d | 2026-03-02 | 2026-03-05 | 135 | 31d | 0d | start no earlier than 2026-02-23 | Senior Frontend Developer | 32h | 3.6.3 |
| 137 | 1.3.6.4 | Implement analytics and reporting visualizations |  | 4d | 2026-03-06 | 2026-03-11 | 136 | 31d | 0d | start no earlier than 2026-03-02 | Senior Frontend Developer | 32h | 3.6.4 |
| 138 | 1.3.6.5 | Implement user management (customers riders staff) |  | 2d | 2026-03-12 | 2026-03-13 | 137 | 31d | 0d | start no earlier than 2026-03-06 | Frontend Developer | 16h | 3.6.5 |
| 139 | 1.3.6.6 | Implement promotional campaign and system configuration |  | 3d | 2026-03-16 | 2026-03-18 | 138 | 31d | 0d |  | Frontend Developer | 24h | 3.6.6 |
| 140 | 1.3.6.7 | Development Complete | milestone | 0d | 2026-03-18 | 2026-03-18 | 139 | 33d |  |  |  |  |  |

| ID | WBS | Task | Duration | Start | Finish | Predecessors | Total slack | Free slack | Resources | Work | wbss |
| --- | --- | --- | --- | --- | --- | --- | --- | --- | --- | --- | --- |
| 141 | 1.4 | **4.0 TESTING & QUALITY ASSURANCE (Weeks 17-20)** | 11d | 2026-03-16 | 2026-03-31 |  |  |  |  | 464h |  |
| 142 | 1.4.1 | **Test Planning (Activities 121-123)** | 5d | 2026-03-16 | 2026-03-20 |  | 31d |  |  | 56h | 4.1 |
| 143 | 1.4.1.1 | Create comprehensive test plan and strategy | 2d | 2026-03-16 | 2026-03-17 |  | 31d | 0d | QA Lead;Test Manager | 16h | 4.1.1 |
| 144 | 1.4.1.2 | Define test scenarios and create test cases | 3d | 2026-03-18 | 2026-03-20 | 143 | 31d |  | QA Engineer;Test Analyst | 24h | 4.1.2 |
| 145 | 1.4.1.3 | Set up test environment and prepare test data | 2d | 2026-03-18 | 2026-03-19 | 143 | 32d |  | QA Engineer;DevOps Engineer | 16h | 4.1.3 |
| 146 | 1.4.2 | **Functional Testing (Activities 124-131)** | 6d | 2026-03-16 | 2026-03-24 |  | 25d |  |  | 160h | 4.2 |
| 147 | 1.4.2.1 | Execute customer app functional tests | 3d | 2026-03-16 | 2026-03-18 | 113 | 30d | 0d | QA Engineer;Test Analyst | 24h | 4.2.1 |
| 148 | 1.4.2.2 | Execute rider app functional tests | 2d | 2026-03-16 | 2026-03-17 | 124 | 34d |  | QA Engineer | 16h | 4.2.2 |
| 149 | 1.4.2.3 | Execute restaurant portal functional tests | 2d | 2026-03-16 | 2026-03-17 | 132 | 34d |  | QA Engineer | 16h | 4.2.3 |
| 150 | 1.4.2.4 | Execute admin dashboard functional tests | 2d | 2026-03-19 | 2026-03-20 | 139 | 31d |  | QA Engineer | 16h | 4.2.4 |
| 151 | 1.4.2.5 | Test payment gateway integrations end-to-end | 3d | 2026-03-19 | 2026-03-24 | 147 | 30d |  | Senior QA Engineer | 24h | 4.2.5 |
| 152 | 1.4.2.6 | Test notification services (SMS and push) | 2d | 2026-03-16 | 2026-03-17 |  | 34d |  | QA Engineer | 16h | 4.2.6 |
| 153 | 1.4.2.7 | Test complete order workflow from placement to delivery | 3d | 2026-03-16 | 2026-03-18 |  | 25d | 0d | QA Lead;Test Analyst | 24h | 4.2.7 |
| 154 | 1.4.2.8 | Document defects and execute regression testing | 3d | 2026-03-16 | 2026-03-18 |  | 25d | 0d | QA Team | 24h | 4.2.8 |
| 155 | 1.4.3 | **Performance & Security Testing (Activities 132-137)** | 11d | 2026-03-16 | 2026-03-31 |  | 25d |  |  | 168h | 4.3 |
| 156 | 1.4.3.1 | Conduct load testing (200 concurrent users) | 8d | 2026-03-19 | 2026-03-31 | 153 | 25d |  | Performance Test Engineer | 64h | 4.3.1 |
| 157 | 1.4.3.2 | Conduct stress testing (500+ concurrent users) | 2d | 2026-03-16 | 2026-03-17 |  | 31d | 0d | Performance Test Engineer | 16h | 4.3.2 |
| 158 | 1.4.3.3 | Optimize API response times and database queries | 3d | 2026-03-18 | 2026-03-20 | 157 | 31d |  | Backend Lead;Database Architect | 24h | 4.3.3 |
| 159 | 1.4.3.4 | Conduct security vulnerability scanning | 2d | 2026-03-19 | 2026-03-20 | 154 | 25d | 0d | Security Engineer | 16h | 4.3.4 |
| 160 | 1.4.3.5 | Perform penetration testing on all systems | 3d | 2026-03-24 | 2026-03-26 | 159 | 25d | 0d | Security Engineer;Ethical Hacker | 24h | 4.3.5 |
| 161 | 1.4.3.6 | Address all critical security vulnerabilities | 3d | 2026-03-27 | 2026-03-31 | 160 | 25d |  | Backend Lead;DevOps Engineer | 24h | 4.3.6 |
| 162 | 1.4.4 | **Compatibility & UAT (Activities 138-142)** | 5d | 2026-03-16 | 2026-03-20 |  | 17d |  |  | 80h | 4.4 |
| 163 | 1.4.4.1 | Test customer app on 10+ device models | 2d | 2026-03-19 | 2026-03-20 | 154 | 31d |  | QA Engineer;Mobile QA | 16h | 4.4.1 |
| 164 | 1.4.4.2 | Test rider app on 5+ Android devices | 2d | 2026-03-19 | 2026-03-20 | 154 | 31d |  | QA Engineer | 16h | 4.4.2 |
| 165 | 1.4.4.3 | Test web portals across multiple browsers | 2d | 2026-03-19 | 2026-03-20 | 154 | 31d |  | QA Engineer | 16h | 4.4.3 |
| 166 | 1.4.4.4 | Conduct user acceptance testing (UAT) with stakeholders | 3d | 2026-03-16 | 2026-03-18 |  | 8d | 0d | Project Manager;QA Lead;Stakeholders | 24h | 4.4.4 |
| 167 | 1.4.4.5 | Obtain UAT sign-off and approval | 1d | 2026-03-19 | 2026-03-19 | 166 | 8d | 0d | Project Manager;Senior Management | 8h | 4.4.5 |

| ID | WBS | Task | Duration | Start | Finish | Predecessors | Total slack | Free slack | Resources | Work | wbss |
| --- | --- | --- | --- | --- | --- | --- | --- | --- | --- | --- | --- |
| 168 | 1.5 | **5.0 DEPLOYMENT & INFRASTRUCTURE (Weeks 21-22)** | 7d | 2026-03-20 | 2026-03-31 |  |  |  |  | 208h |  |
| 169 | 1.5.1 | **Cloud Infrastructure Setup (Activities 143-150)** | 6d | 2026-03-20 | 2026-03-30 |  |  |  |  | 104h | 5.1 |
| 170 | 1.5.1.1 | Provision production cloud servers (AWS/GCP) | 2d | 2026-03-20 | 2026-03-24 | 167 | 26d | 0d | DevOps Engineer;Cloud Architect | 16h | 5.1.1 |
| 171 | 1.5.1.2 | Configure load balancer and auto-scaling | 2d | 2026-03-25 | 2026-03-26 | 170 | 26d | 0d | DevOps Engineer | 16h | 5.1.2 |
| 172 | 1.5.1.3 | Set up production database with replication | 2d | 2026-03-25 | 2026-03-26 | 170 | 26d | 0d | Database Administrator;DevOps Engineer | 16h | 5.1.3 |
| 173 | 1.5.1.4 | Configure Redis cache cluster | 1d | 2026-03-25 | 2026-03-25 | 170 | 29d |  | DevOps Engineer | 8h | 5.1.4 |
| 174 | 1.5.1.5 | Set up CDN for static assets | 1d | 2026-03-25 | 2026-03-25 | 170 | 29d |  | DevOps Engineer | 8h | 5.1.5 |
| 175 | 1.5.1.6 | Install SSL certificates and configure HTTPS | 1d | 2026-03-25 | 2026-03-25 | 170 | 29d |  | DevOps Engineer | 8h | 5.1.6 |
| 176 | 1.5.1.7 | Set up monitoring alerting and logging systems | 2d | 2026-03-27 | 2026-03-30 | 171 | 26d |  | DevOps Engineer;SRE | 16h | 5.1.7 |
| 177 | 1.5.1.8 | Configure automated backup and disaster recovery | 2d | 2026-03-27 | 2026-03-30 | 172 | 26d |  | DevOps Engineer;Database Administrator | 16h | 5.1.8 |
| 178 | 1.5.2 | **Application Deployment (Activities 151-157)** | 6d | 2026-03-20 | 2026-03-30 |  |  |  |  | 104h | 5.2 |
| 179 | 1.5.2.1 | Deploy backend APIs to production | 2d | 2026-03-20 | 2026-03-24 |  | 27d | 0d | DevOps Engineer;Backend Lead | 16h | 5.2.1 |
| 180 | 1.5.2.2 | Deploy admin dashboard to production | 1d | 2026-03-25 | 2026-03-25 | 179 | 29d |  | DevOps Engineer;Frontend Lead | 8h | 5.2.2 |
| 181 | 1.5.2.3 | Deploy restaurant portal to production | 1d | 2026-03-25 | 2026-03-25 | 179 | 29d |  | DevOps Engineer;Frontend Lead | 8h | 5.2.3 |
| 182 | 1.5.2.4 | Submit and publish customer app to App Store | 3d | 2026-03-25 | 2026-03-27 | 179 | 27d |  | Mobile Lead;iOS Developer | 24h | 5.2.4 |
| 183 | 1.5.2.5 | Submit and publish customer app to Google Play | 2d | 2026-03-25 | 2026-03-26 | 179 | 28d |  | Mobile Lead;Android Developer | 16h | 5.2.5 |
| 184 | 1.5.2.6 | Submit and publish rider app to Google Play | 2d | 2026-03-25 | 2026-03-26 | 179 | 28d |  | Mobile Lead;Android Developer | 16h | 5.2.6 |
| 185 | 1.5.2.7 | Conduct production smoke testing and validation | 2d | 2026-03-27 | 2026-03-30 | 183 | 18d | 9d | QA Lead;DevOps Engineer | 16h | 5.2.7 |
| 186 | 1.6 | **6.0 OPERATIONAL SETUP (Weeks 21-22)** | 7d | 2026-04-01 | 2026-04-09 |  | 0d |  |  | 288h |  |
| 187 | 1.6.1 | **Delivery Operations (Activities 158-163)** | 7d | 2026-04-01 | 2026-04-09 |  |  |  |  | 80h | 6.1 |
| 188 | 1.6.1.1 | Define delivery zones and configure pricing | 2d | 2026-04-01 | 2026-04-02 | 167 | 1d | 0d | Operations Manager;Business Analyst | 16h | 6.1.1 |
| 189 | 1.6.1.2 | Procure delivery bags uniforms and equipment | 2d | 2026-04-03 | 2026-04-06 | 188 | 20d | 0d | Operations Manager;Procurement | 16h | 6.1.2 |
| 190 | 1.6.1.3 | Recruit and interview 20 delivery riders | 2d | 2026-04-03 | 2026-04-06 | 188 | 1d | 0d | HR Manager;Operations Manager | 16h | 6.1.3 |
| 191 | 1.6.1.4 | Complete rider onboarding and documentation | 2d | 2026-04-07 | 2026-04-08 | 190 | 1d | 0d | HR Manager | 16h | 6.1.4 |
| 192 | 1.6.1.5 | Distribute equipment and uniforms to riders | 1d | 2026-04-07 | 2026-04-07 | 189 | 20d |  | Operations Manager | 8h | 6.1.5 |
| 193 | 1.6.1.6 | Set up rider scheduling and zone assignments | 1d | 2026-04-09 | 2026-04-09 | 191 | 1d |  | Operations Manager | 8h | 6.1.6 |

| ID | WBS | Task | Type | Duration | Start | Finish | Predecessors | Total slack | Free slack | Resources | Work | wbss |
| --- | --- | --- | --- | --- | --- | --- | --- | --- | --- | --- | --- | --- |
| 194 | 1.6.2 | **Training Programs (Activities 164-169)** |  | 11d | 2026-04-01 | 2026-04-15 |  | 11d |  |  | 112h | 6.2 |
| 195 | 1.6.2.1 | Develop training materials for all user types |  | 3d | 2026-04-01 | 2026-04-03 | 167 | 2d | 0d | Training Specialist;Technical Writer | 24h | 6.2.1 |
| 196 | 1.6.2.2 | Create video tutorials and documentation |  | 3d | 2026-04-06 | 2026-04-08 | 195 | 2d | 0d | Training Specialist;Video Producer | 24h | 6.2.2 |
| 197 | 1.6.2.3 | Conduct 2-day restaurant staff training workshop |  | 2d | 2026-04-09 | 2026-04-10 | 196 | 15d | 1d | Training Specialist;Operations Manager | 16h | 6.2.3 |
| 198 | 1.6.2.4 | Conduct 3-day delivery rider training program |  | 3d | 2026-04-09 | 2026-04-13 | 196 | 14d | 0d | Training Specialist;Operations Manager | 24h | 6.2.4 |
| 199 | 1.6.2.5 | Conduct admin dashboard training for management |  | 1d | 2026-04-09 | 2026-04-09 | 196 | 16d | 2d | Training Specialist;Technical Lead | 8h | 6.2.5 |
| 200 | 1.6.2.6 | Evaluate training effectiveness with assessments |  | 2d | 2026-04-14 | 2026-04-15 | 197, 198, 199 | 14d |  | Training Specialist | 16h | 6.2.6 |
| 201 | 1.6.3 | **Marketing & Launch Prep (Activities 170-174)** |  | 6d | 2026-04-01 | 2026-04-08 |  | 19d |  |  | 96h | 6.3 |
| 202 | 1.6.3.1 | Develop brand identity and marketing guidelines |  | 3d | 2026-04-01 | 2026-04-03 | 167 | 19d | 0d | Marketing Manager;Brand Designer | 24h | 6.3.1 |
| 203 | 1.6.3.2 | Create social media content and campaigns |  | 3d | 2026-04-06 | 2026-04-08 | 202 | 19d |  | Marketing Team;Content Creator | 24h | 6.3.2 |
| 204 | 1.6.3.3 | Design in-store promotional materials |  | 2d | 2026-04-06 | 2026-04-07 | 202 | 20d |  | Graphic Designer | 16h | 6.3.3 |
| 205 | 1.6.3.4 | Set up launch promotions (25% off referral program) |  | 2d | 2026-04-01 | 2026-04-02 | 167 | 23d |  | Marketing Manager | 16h | 6.3.4 |
| 206 | 1.6.3.5 | Configure loyalty program in system |  | 2d | 2026-04-01 | 2026-04-02 | 167 | 23d |  | Backend Developer;Marketing Manager | 16h | 6.3.5 |
| 207 | 1.7 | **7.0 LAUNCH & STABILIZATION (Weeks 23-26)** |  | 17d | 2026-04-13 | 2026-05-06 |  |  |  |  | 320h |  |
| 208 | 1.7.1 | **Soft Launch (Activities 175-178)** |  | 5d | 2026-04-13 | 2026-04-17 |  |  |  |  | 104h | 7.1 |
| 209 | 1.7.1.1 | Launch with limited delivery zone (Week 23) | milestone | 0d | 2026-04-13 | 2026-04-13 | 185, 193, 196 | 17d |  | Operations Team;Technical Team |  | 7.1.1 |
| 210 | 1.7.1.2 | Monitor system performance 24/7 |  | 5d | 2026-04-13 | 2026-04-17 | 185, 193, 196 | 12d |  | DevOps Engineer;SRE;Operations Manager | 40h | 7.1.2 |
| 211 | 1.7.1.3 | Collect user feedback and address issues |  | 5d | 2026-04-13 | 2026-04-17 | 185, 193, 196 | 12d |  | Customer Support;Product Manager | 40h | 7.1.3 |
| 212 | 1.7.1.4 | Optimize workflows based on real operations |  | 3d | 2026-04-13 | 2026-04-15 | 185, 193, 196 | 9d | 0d | Operations Manager;Technical Lead | 24h | 7.1.4 |
| 213 | 1.7.1.5 | Launch preparation completed | milestone | 0d | 2026-04-15 | 2026-04-15 | 212 | 14d |  |  |  |  |
| 214 | 1.7.2 | **Full Launch (Activities 179-182)** |  | 8d | 2026-04-16 | 2026-04-27 |  |  |  |  | 144h | 7.2 |
| 215 | 1.7.2.1 | Execute full marketing campaign |  | 3d | 2026-04-16 | 2026-04-20 | 212 | 11d |  | Marketing Team | 24h | 7.2.1 |
| 216 | 1.7.2.2 | Expand delivery zones progressively |  | 5d | 2026-04-16 | 2026-04-22 | 212 | 9d |  | Operations Manager | 40h | 7.2.2 |
| 217 | 1.7.2.3 | Scale rider fleet based on demand |  | 5d | 2026-04-16 | 2026-04-22 | 212 | 9d |  | HR Manager;Operations Manager | 40h | 7.2.3 |
| 218 | 1.7.2.4 | Monitor KPIs and customer acquisition |  | 5d | 2026-04-16 | 2026-04-22 |  | 9d |  | Product Manager;Marketing Manager | 40h | 7.2.4 |

| ID | WBS | Task | Duration | Start | Finish | Predecessors | Total slack | Free slack | Resources | Work | wbss |
| --- | --- | --- | --- | --- | --- | --- | --- | --- | --- | --- | --- |
| 219 | 1.7.3 | **Project Closure (Activities 183-186)** | 9d | 2026-04-13 | 2026-04-23 |  | 8d |  |  | 72h | 7.3 |
| 220 | 1.7.3.1 | Conduct post-launch performance review | 3d | 2026-04-13 | 2026-04-15 |  | 8d | 0d | Project Manager;Senior Management | 24h | 7.3.1 |
| 221 | 1.7.3.2 | Document lessons learned | 2d | 2026-04-16 | 2026-04-17 | 220 | 8d | 0d | Project Manager;Team Leads | 16h | 7.3.2 |
| 222 | 1.7.3.3 | Create project closure report | 2d | 2026-04-20 | 2026-04-21 | 221 | 8d | 0d | Project Manager | 16h | 7.3.3 |
| 223 | 1.7.3.4 | Handover to operations team with final presentation | 2d | 2026-04-22 | 2026-04-23 | 222 | 8d |  | Project Manager;Operations Team | 16h | 7.3.4 |
